# Cachimbo a crack V1.2

Schedule from MS Project, 2020-01-08 to 2020-02-19, A marks actual dates.
Entel

## Calendars

- Estándar: Mon-Fri 09:00-13:00, 15:00-19:00; Sat-Sun off.

## Resources

| Resource | Rate |
| --- | --- |
| DC | 1 |

## Schedule

| ID | WBS | Task | Type | Duration | Start | Finish | Predecessors | Complete | Baseline start | Baseline finish | Baseline duration | Constraint | Deadline | Work | Actual work | Baseline cost | Text20 | Text1 |
| --- | --- | --- | --- | --- | --- | --- | --- | --- | --- | --- | --- | --- | --- | --- | --- | --- | --- | --- |
| 1 | 1 | **Cronograma de Proyecto V1.2** |  | 31d | 2020-01-08 A | 2020-02-19 A |  | 100% | 2011-06-01 | 2011-07-14 | 32d |  |  | 136h | 136h | 1,091.27 | 30/09/2009 |  |
| 2 | 1.1 | **Procesos de Gestión** |  | 31d | 2020-01-08 A | 2020-02-19 A |  | 100% | 2011-06-01 | 2011-07-14 | 32d |  | 2009-10-06 | 136h | 136h | 1,091.27 | 30/10/2009 | 1.1 |
| 3 | 1.1.1 | **Inicio** |  | 31d | 2020-01-08 A | 2020-02-19 A |  | 100% | 2011-06-01 | 2011-07-01 | 23d |  | 2009-10-06 | 136h | 136h | 586.27 | 31/08/2011 | 1.2 |
| 4 | 1.1.1.1 | Revisión de metodología de trabajo |  | 1d | 2020-01-08 A | 2020-01-08 A |  | 100% | 2011-06-01 | 2011-06-07 | 5d |  | 2009-10-06 |  |  | 40 | 31/12/2009 | 1.3 |
| 5 | 1.1.1.2 | **Plan del Proyecto** |  | 16d | 2020-01-09 A | 2020-01-30 A |  | 100% | 2011-06-07 | 2011-06-17 | 8d |  | 2009-10-06 |  |  | 292.96 | 31/01/2010 | 1.4 |
| 6 | 1.1.1.2.1 | **Elaboración de Plan del Proyecto** |  | 12d | 2020-01-09 A | 2020-01-24 A |  | 100% | 2011-06-07 | 2011-06-15 | 6d |  | 2009-10-06 |  |  | 132.96 | 28/02/2010 | 1.5 |
| 7 | 1.1.1.2.1.1 | Definición de entregables |  | 2d | 2020-01-09 A | 2020-01-10 A | 4 | 100% | 2011-06-08 | 2011-06-08 | 1d |  | 2009-10-06 |  |  |  | 31/03/2010 | 1.6 |
| 8 | 1.1.1.2.1.2 | Plan de Proyecto |  | 3d | 2020-01-13 A | 2020-01-15 A | 7 | 100% | 2011-06-13 | 2011-06-13 | 1d |  | 2009-10-06 |  |  | 9.06 | 31/07/2010 | 2.1.2 |
| 9 | 1.1.1.2.1.3 | Acta de reunión interna | milestone | 0d | 2020-01-16 A | 2020-01-16 A | 8 | 100% |  |  |  |  |  |  |  |  |  |  |
| 10 | 1.1.1.2.1.4 | Informe de avance semanal | milestone | 0d | 2020-01-16 A | 2020-01-16 A | 9 | 100% |  |  |  |  |  |  |  |  |  |  |
| 11 | 1.1.1.2.1.5 | Aceptación de entregables | milestone | 0d | 2020-01-16 A | 2020-01-16 A | 10 | 100% |  |  |  |  |  |  |  |  |  |  |
| 12 | 1.1.1.2.1.6 | Elaborar Plan de gestion del proyecto |  | 1d | 2020-01-16 A | 2020-01-16 A | 11 | 100% |  |  |  |  |  |  |  |  |  |  |
| 13 | 1.1.1.2.1.7 | Cronograma de proyecto |  | 2d | 2020-01-17 A | 2020-01-20 A | 12 | 100% | 2011-06-09 | 2011-06-09 | 1d | start no earlier than 2020-01-13 | 2009-10-06 |  |  |  | 31/05/2010 | 2.1 |
| 14 | 1.1.1.2.1.8 | Registro de riesgos |  | 1d | 2020-01-21 A | 2020-01-21 A | 13 | 100% | 2011-06-15 | 2011-06-15 | 1d |  | 2009-10-06 |  |  | 8 |  | 2.2 |
| 15 | 1.1.1.2.1.9 | Proceso de gestión de proyecto |  | 3d | 2020-01-22 A | 2020-01-24 A | 14 | 100% | 2011-06-09 | 2011-06-09 | 1d |  | 2009-10-06 |  |  |  |  |  |
| 16 | 1.1.1.2.2 | **Revisión interna** |  | 2d | 2020-01-27 A | 2020-01-28 A |  | 100% | 2011-06-16 | 2011-06-17 | 2d |  | 2009-10-06 |  |  | 16 |  |  |
| 17 | 1.1.1.2.2.1 | Revisión por el equipo del proyecto |  | 1d | 2020-01-27 A | 2020-01-27 A | 15 | 100% | 2011-06-16 | 2011-06-16 | 1d |  | 2009-10-06 |  |  | 8 |  | 4.1 |
| 18 | 1.1.1.2.2.2 | Ajustes al Plan de Proyecto |  | 1d | 2020-01-28 A | 2020-01-28 A | 17 | 100% | 2011-06-17 | 2011-06-17 | 1d |  | 2009-10-06 |  |  | 8 |  | 4.2 |
| 19 | 1.1.1.2.3 | **Revisión por el cliente** |  | 2d | 2020-01-29 A | 2020-01-30 A |  | 100% | 2011-06-16 | 2011-06-17 | 2d |  | 2009-10-06 |  |  | 32 |  | 8.3 |
| 20 | 1.1.1.2.3.1 | Entrega de Plan del Proyecto |  | 1d | 2020-01-29 A | 2020-01-29 A | 18 | 100% | 2011-06-16 | 2011-06-16 | 1d |  | 2009-10-06 |  |  | 8 |  | 8.4 |
| 21 | 1.1.1.2.3.2 | Reunión conjunta de revisión del Plan del Proyecto |  | 1d | 2020-01-30 A | 2020-01-30 A | 20 | 100% | 2011-06-17 | 2011-06-17 | 1d |  | 2009-10-06 |  |  | 8 |  | 8.5 |
| 22 | 1.1.1.3 | **REQM** |  | 2d | 2020-01-31 A | 2020-02-03 A | 5 | 100% |  |  |  |  |  |  |  |  |  |  |
| 23 | 1.1.1.3.1 | **Gestión de Requerimientos** |  | 1d | 2020-01-31 A | 2020-01-31 A |  | 100% | 2011-06-20 | 2011-06-23 | 4d |  | 2009-10-06 |  |  | 29.31 |  |  |
| 24 | 1.1.1.3.1.1 | Proceso de gestión de requerimientos |  | 1d | 2020-01-31 A | 2020-01-31 A | 17 | 100% | 2011-06-22 | 2011-06-22 | 1d |  | 2009-10-06 |  |  | 8 |  | 9.3 |
| 25 | 1.1.1.3.1.2 | Acta de reunión cliente |  | 1d | 2020-01-31 A | 2020-01-31 A | 17 | 100% | 2011-06-23 | 2011-06-23 | 1d |  | 2009-10-06 |  |  | 8 |  | 9.4 |

| ID | WBS | Task | Duration | Start | Finish | Predecessors | Complete | Baseline start | Baseline finish | Baseline duration | Constraint | Deadline | Work | Actual work | Baseline cost | Text1 |
| --- | --- | --- | --- | --- | --- | --- | --- | --- | --- | --- | --- | --- | --- | --- | --- | --- |
| 26 | 1.1.1.3.2 | **Solicitar Cambios a Requerimientos** | 1d | 2020-02-03 A | 2020-02-03 A | 23 | 100% | 2011-06-24 | 2011-07-01 | 6d |  | 2009-10-06 |  |  | 40 | 10 |
| 27 | 1.1.1.3.2.1 | Matriz de trazabilidad de requerimientos | 1d | 2020-02-03 A | 2020-02-03 A | 25 | 100% | 2011-06-24 | 2011-06-24 | 1d |  | 2009-10-06 |  |  | 8 | 10.1 |
| 28 | 1.1.1.3.2.2 | Lista maestra de requerimientos | 1d | 2020-02-03 A | 2020-02-03 A | 25 | 100% | 2011-06-30 | 2011-06-30 | 1d |  | 2009-10-06 |  |  | 8 | 12 |
| 29 | 1.1.1.3.2.3 | Solicitud de cambios a requerimientos | 1d | 2020-02-03 A | 2020-02-03 A | 25 | 100% | 2011-06-28 | 2011-06-28 | 1d |  | 2009-10-06 |  |  | 8 | 10.3 |
| 30 | 1.1.1.3.2.4 | Registro de cambios a requerimientos | 1d | 2020-02-03 A | 2020-02-03 A | 25 | 100% |  |  |  |  |  |  |  |  |  |
| 31 | 1.1.1.4 | **MA** | 1d | 2020-02-04 A | 2020-02-04 A | 28 | 100% | 2011-07-01 | 2011-07-01 | 1d |  | 2009-10-06 |  |  | 8 | 13 |
| 32 | 1.1.1.4.1 | Procesos de medición | 1d | 2020-02-04 A | 2020-02-04 A |  | 100% | 2011-07-04 | 2011-07-14 | 9d |  | 2009-10-06 |  |  | 216 | 14 |
| 33 | 1.1.1.4.2 | Tablero métricas | 1d | 2020-02-04 A | 2020-02-04 A |  | 100% |  |  |  |  |  |  |  |  |  |
| 34 | 1.1.1.4.3 | Ficha de métricas de exposición al riesgo | 1d | 2020-02-04 A | 2020-02-04 A |  | 100% |  |  |  | finish no earlier than 2020-02-04 |  |  |  |  |  |
| 35 | 1.1.1.4.4 | Ficha de métricas de índice de cambios en ítems de configuración | 1d | 2020-02-04 A | 2020-02-04 A |  | 100% |  |  |  |  |  |  |  |  |  |
| 36 | 1.1.1.4.5 | Ficha de métricas de volatilidad de requerimientos | 1d | 2020-02-04 A | 2020-02-04 A |  | 100% |  |  |  |  |  |  |  |  |  |
| 37 | 1.1.1.4.6 | Ficha de métricas de numero de no conformidades QA del producto | 1d | 2020-02-04 A | 2020-02-04 A |  | 100% |  |  |  |  |  |  |  |  |  |
| 38 | 1.1.1.5 | **PPQA** | 3d | 2020-02-06 A | 2020-02-10 A |  | 100% | 2011-07-06 | 2011-07-06 | 1d |  | 2009-10-06 |  |  | 8 | 8.1 |
| 39 | 1.1.1.5.1 | Métrica QA Porcentaje de Revisiones QA del Producto PPQA | 2d | 2020-02-06 A | 2020-02-07 A |  | 100% | 2011-07-07 | 2011-07-07 | 1d | start no earlier than 2020-01-30 | 2009-10-06 |  |  | 8 | 8.2 |
| 40 | 1.1.1.5.2 | Matriz de seguimiento de proyecto interno | 2d | 2020-02-06 A | 2020-02-07 A |  | 100% | 2011-07-04 | 2011-07-07 | 4d |  | 2009-10-06 |  |  | 24 | 6.1 |
| 41 | 1.1.1.5.3 | Herramienta de gestión de aseguramiento de calidad | 1d | 2020-02-06 A | 2020-02-06 A |  | 100% | 2011-07-04 | 2011-07-04 | 1d |  | 2009-10-06 |  |  | 8 | 6.2 |
| 42 | 1.1.1.5.4 | Checklist proyecto de Calidad | 1d | 2020-02-07 A | 2020-02-07 A | 41 | 100% | 2011-07-04 | 2011-07-04 | 0d |  | 2009-10-06 |  |  |  |  |
| 43 | 1.1.1.5.5 | Checklist proyecto de Gestión de la configuración | 1d | 2020-02-07 A | 2020-02-07 A | 41 | 100% |  |  |  |  |  |  |  |  |  |
| 44 | 1.1.1.5.6 | Proceso de aseguramiento de calidad | 1d | 2020-02-10 A | 2020-02-10 A | 43, 42 | 100% | 2011-07-07 | 2011-07-07 | 1d |  | 2009-10-06 |  |  | 8 | 8.2 |
| 45 | 1.1.1.6 | **CM** | 19d | 2020-01-24 A | 2020-02-19 A | 44 | 100% | 2011-07-05 | 2011-07-13 | 7d |  | 2009-10-06 | 136h | 136h | 56 | 17 |
| 46 | 1.1.1.6.1 | Gestión de la configuración | 1d | 2020-02-11 A | 2020-02-11 A |  | 100% | 2011-07-05 | 2011-07-13 | 7d | start no earlier than 2020-01-28 |  |  |  |  |  |
| 47 | 1.1.1.6.2 | Proceso de gestión de la configuración | 1d | 2020-02-11 A | 2020-02-11 A |  | 100% | 2011-07-05 | 2011-07-05 | 1d | start no earlier than 2020-01-28 |  | 8h | 8h |  |  |
| 48 | 1.1.1.6.3 | Registro de ítems de configuración | 1d | 2020-02-12 A | 2020-02-12 A | 47 | 100% | 2011-07-06 | 2011-07-06 | 1d |  |  | 8h | 8h |  |  |
| 49 | 1.1.1.6.4 | Solicitud de acceso | 1d | 2020-02-13 A | 2020-02-13 A | 48 | 100% | 2011-07-07 | 2011-07-07 | 1d |  |  | 8h | 8h |  |  |

| ID | WBS | Task | Type | Duration | Start | Finish | Predecessors | Complete | Baseline start | Baseline finish | Baseline duration | Constraint | Work | Actual work |
| --- | --- | --- | --- | --- | --- | --- | --- | --- | --- | --- | --- | --- | --- | --- |
| 50 | 1.1.1.6.5 | **Registro de items de configuración** |  | 4d | 2020-02-14 A | 2020-02-19 A | 49 | 100% | 2011-07-08 | 2011-07-08 | 1d |  | 40h | 40h |
| 51 | 1.1.1.6.5.1 | Asignación de trabajo |  | 1d | 2020-02-14 A | 2020-02-14 A |  | 100% | 2011-07-11 | 2011-07-11 | 1d |  | 8h | 8h |
| 52 | 1.1.1.6.5.2 | Consolidación de métricas |  | 1d | 2020-02-17 A | 2020-02-17 A | 51 | 100% | 2011-07-12 | 2011-07-12 | 1d |  | 8h | 8h |
| 53 | 1.1.1.6.5.3 | Comité de analistas de Proyectos |  | 1d | 2020-02-18 A | 2020-02-18 A | 52 | 100% | 2011-07-13 | 2011-07-13 | 1d |  | 8h | 8h |
| 54 | 1.1.1.6.5.4 | Ejecutar la Revisión de procesos |  | 1d | 2020-02-19 A | 2020-02-19 A | 53 | 100% | 2011-07-05 | 2011-07-05 | 1d |  | 8h | 8h |
| 55 | 1.1.1.6.5.5 | Auditoria semanal de gestión de configuración |  | 1d | 2020-02-19 A | 2020-02-19 A | 53 | 100% | 2011-07-05 | 2011-07-05 | 1d | start no earlier than 2020-02-05 | 8h | 8h |
| 56 | 1.1.1.6.6 | **Reuniones de Comité con el Cliente** |  | 19d | 2020-01-24 A | 2020-02-19 A |  | 100% | 2011-07-14 | 2011-07-14 | 1d |  | 72h | 72h |
| 57 | 1.1.1.6.6.1 | **Comité General #1** |  | 1d | 2020-01-24 A | 2020-01-24 A |  | 100% | 2011-07-14 | 2011-07-14 | 1d |  | 24h | 24h |
| 58 | 1.1.1.6.6.1.1 | Preparar Comité General |  | 1d | 2020-01-24 A | 2020-01-24 A |  | 100% | 2011-07-14 | 2011-07-14 | 1d | start no earlier than 2020-02-05 | 8h | 8h |
| 59 | 1.1.1.6.6.1.2 | Comité General |  | 1d | 2020-01-24 A | 2020-01-24 A |  | 100% | 2011-07-14 | 2011-07-14 | 1d | start no earlier than 2020-02-05 | 8h | 8h |
| 60 | 1.1.1.6.6.1.3 | Acta de reunión externa |  | 1d | 2020-01-24 A | 2020-01-24 A |  | 100% | 2011-07-14 | 2011-07-14 | 1d | start no earlier than 2020-02-05 | 8h | 8h |
| 61 | 1.1.1.6.6.2 | **Comité Operativo #2** |  | 1d | 2020-02-05 A | 2020-02-05 A |  | 100% | 2011-07-14 | 2011-07-14 | 1d |  | 24h | 24h |
| 62 | 1.1.1.6.6.2.1 | Preparar Comité General |  | 1d | 2020-02-05 A | 2020-02-05 A |  | 100% | 2011-07-14 | 2011-07-14 | 1d | start no earlier than 2020-02-05 | 8h | 8h |
| 63 | 1.1.1.6.6.2.2 | Comité General |  | 1d | 2020-02-05 A | 2020-02-05 A |  | 100% | 2011-07-14 | 2011-07-14 | 1d | start no earlier than 2020-02-05 | 8h | 8h |
| 64 | 1.1.1.6.6.2.3 | Acta de reunión externa |  | 1d | 2020-02-05 A | 2020-02-05 A |  | 100% | 2011-07-14 | 2011-07-14 | 1d | start no earlier than 2020-02-05 | 8h | 8h |
| 65 | 1.1.1.6.6.3 | **Comité General #3** |  | 1d | 2020-02-19 A | 2020-02-19 A |  | 100% | 2011-07-14 | 2011-07-14 | 1d |  | 24h | 24h |
| 66 | 1.1.1.6.6.3.1 | Preparar Comité General |  | 1d | 2020-02-19 A | 2020-02-19 A |  | 100% | 2011-07-14 | 2011-07-14 | 1d | start no earlier than 2020-02-19 | 8h | 8h |
| 67 | 1.1.1.6.6.3.2 | Comité General |  | 1d | 2020-02-19 A | 2020-02-19 A |  | 100% | 2011-07-14 | 2011-07-14 | 1d | start no earlier than 2020-02-19 | 8h | 8h |
| 68 | 1.1.1.6.6.3.3 | Acta de reunión externa |  | 1d | 2020-02-19 A | 2020-02-19 A |  | 100% | 2011-07-14 | 2011-07-14 | 1d | start no earlier than 2020-02-19 | 8h | 8h |
| 69 | 1.1.1.7 | **Cierre** |  | 1d | 2020-02-19 A | 2020-02-19 A |  | 100% | 2011-06-01 | 2011-06-10 | 8d |  |  |  |
| 70 | 1.1.1.7.1 | Revisión de Entregables del Proyecto |  | 1d | 2020-02-19 A | 2020-02-19 A |  | 100% | 2011-06-01 | 2011-06-01 | 1d | start no earlier than 2020-02-19 |  |  |
| 71 | 1.1.1.7.2 | Elaboración de Relatorio de Proyecto | milestone | 0d | 2020-02-19 A | 2020-02-19 A | 70 | 100% | 2011-06-02 | 2011-06-02 | 1d | start no earlier than 2020-02-19 |  |  |
| 72 | 1.1.1.7.3 | **Relatorio de Proyectos** |  | 0d | 2020-02-19 A | 2020-02-19 A |  | 100% | 2011-06-03 | 2011-06-07 | 3d |  |  |  |
| 73 | 1.1.1.7.3.1 | Elaborar relatorio de proyecto | milestone | 0d | 2020-02-19 A | 2020-02-19 A | 71 | 100% | 2011-06-03 | 2011-06-03 | 1d |  |  |  |
| 74 | 1.1.1.7.3.2 | Revisión y ajustes de relatorio por el equipo del proyecto | milestone | 0d | 2020-02-19 A | 2020-02-19 A | 73 | 100% | 2011-06-06 | 2011-06-06 | 1d |  |  |  |
| 75 | 1.1.1.7.3.3 | Revisión de relatorio con los Proyectos | milestone | 0d | 2020-02-19 A | 2020-02-19 A | 74 | 100% | 2011-06-07 | 2011-06-07 | 1d |  |  |  |

| ID | WBS | Task | Type | Duration | Start | Finish | Predecessors | Complete | Baseline start | Baseline finish | Baseline duration | Constraint |
| --- | --- | --- | --- | --- | --- | --- | --- | --- | --- | --- | --- | --- |
| 76 | 1.1.1.7.4 | **Gestión de Configuración** |  | 0d | 2020-02-19 A | 2020-02-19 A |  | 100% | 2011-06-08 | 2011-06-10 | 3d |  |
| 77 | 1.1.1.7.4.1 | Solicitar auditoria de GC | milestone | 0d | 2020-02-19 A | 2020-02-19 A | 72 | 100% | 2011-06-08 | 2011-06-08 | 1d |  |
| 78 | 1.1.1.7.4.2 | Auditoria de Gestión de Configuración de Proyecto | milestone | 0d | 2020-02-19 A | 2020-02-19 A | 77 | 100% | 2011-06-09 | 2011-06-09 | 1d |  |
| 79 | 1.1.1.7.4.3 | Archivar registros del proyecto | milestone | 0d | 2020-02-19 A | 2020-02-19 A | 78 | 100% | 2011-06-10 | 2011-06-10 | 1d |  |
| 80 | 1.2 | **REQM - Procesos de Ingeniería** |  | 14d | 2020-01-31 A | 2020-02-19 A |  | 100% | 2011-06-01 | 2011-06-07 | 5d |  |
| 81 | 1.2.1 | **BASE2** |  | 14d | 2020-01-31 A | 2020-02-19 A |  | 100% | 2011-06-01 | 2011-06-07 | 5d |  |
| 82 | 1.2.1.1 | **Analisis** |  | 1d | 2020-01-31 A | 2020-01-31 A |  | 100% | 2011-06-01 | 2011-06-07 | 5d |  |
| 83 | 1.2.1.1.1 | **Casos de Uso** |  | 1d | 2020-01-31 A | 2020-01-31 A |  | 100% | 2011-06-01 | 2011-06-03 | 3d |  |
| 84 | 1.2.1.1.1.1 | Documento de análisis |  | 1d | 2020-01-31 A | 2020-01-31 A |  | 100% | 2011-06-01 | 2011-06-01 | 1d | start no earlier than 2020-01-27 |
| 85 | 1.2.1.1.1.2 | Actualizar glosario de términos | milestone | 0d | 2020-01-31 A | 2020-01-31 A | 84 | 100% | 2011-06-03 | 2011-06-03 | 1d |  |
| 86 | 1.2.1.2 | **Diseño** |  | 9d | 2020-02-03 A | 2020-02-13 A |  | 100% | 2011-06-01 | 2011-06-07 | 5d |  |
| 87 | 1.2.1.2.1 | Documento de Diseño |  | 1d | 2020-02-03 A | 2020-02-03 A |  | 100% | 2011-06-01 | 2011-06-01 | 1d |  |
| 88 | 1.2.1.2.2 | Análisis de la información |  | 1d | 2020-02-03 A | 2020-02-03 A |  | 100% | 2011-06-01 | 2011-06-01 | 1d | start no earlier than 2020-01-27 |
| 89 | 1.2.1.2.3 | Definir forma y características de formación |  | 1d | 2020-02-04 A | 2020-02-04 A | 88 | 100% | 2011-06-01 | 2011-06-01 | 1d |  |
| 90 | 1.2.1.2.4 | Definir medios de comunicación |  | 1d | 2020-02-04 A | 2020-02-04 A | 88 | 100% | 2011-06-01 | 2011-06-01 | 1d |  |
| 91 | 1.2.1.2.5 | **Elaboración de presentación de la estrategia** |  | 7d | 2020-02-05 A | 2020-02-13 A | 90 | 100% | 2011-06-01 | 2011-06-01 | 1d |  |
| 92 | 1.2.1.2.5.1 | **Verificación del coordinador** |  | 1d | 2020-02-05 A | 2020-02-05 A |  | 100% | 2011-06-01 | 2011-06-02 | 2d |  |
| 93 | 1.2.1.2.5.1.1 | Verificación de la estrategía de formación y comunicación por el coordinador |  | 1d | 2020-02-05 A | 2020-02-05 A |  | 100% | 2011-06-01 | 2011-06-01 | 1d | start no earlier than 2020-01-29 |
| 94 | 1.2.1.2.5.1.2 | Adecuación de Cambios | milestone | 0d | 2020-02-05 A | 2020-02-05 A | 93 | 100% | 2011-06-02 | 2011-06-02 | 1d |  |
| 95 | 1.2.1.2.5.2 | **Aseguramiento de calidad** |  | 3d | 2020-02-06 A | 2020-02-10 A |  | 100% | 2011-06-01 | 2011-06-07 | 5d |  |
| 96 | 1.2.1.2.5.2.1 | Preparar las actividades de QA. |  | 1d | 2020-02-06 A | 2020-02-06 A |  | 100% | 2011-06-01 | 2011-06-01 | 1d | start no earlier than 2020-02-06 |
| 97 | 1.2.1.2.5.2.2 | Ejecutar la Revisión de QA | milestone | 0d | 2020-02-06 A | 2020-02-06 A | 96 | 100% | 2011-06-02 | 2011-06-02 | 1d |  |
| 98 | 1.2.1.2.5.2.3 | Ejecutar la Revisión de procesos | milestone | 0d | 2020-02-06 A | 2020-02-06 A | 97 | 100% | 2011-06-03 | 2011-06-03 | 1d |  |
| 99 | 1.2.1.2.5.2.4 | Levantar la No Conformidad |  | 1d | 2020-02-07 A | 2020-02-07 A | 98 | 100% | 2011-06-03 | 2011-06-03 | 1d |  |
| 100 | 1.2.1.2.5.2.5 | Realizar el seguimiento |  | 1d | 2020-02-10 A | 2020-02-10 A | 99 | 100% | 2011-06-06 | 2011-06-06 | 1d |  |
| 101 | 1.2.1.2.5.2.6 | Elaborar e Informar las actividades de QA a la Gerencia del Servicio | milestone | 0d | 2020-02-10 A | 2020-02-10 A | 100 | 100% | 2011-06-07 | 2011-06-07 | 1d |  |

| ID | WBS | Task | Type | Duration | Start | Finish | Predecessors | Complete | Baseline start | Baseline finish | Baseline duration | Constraint |
| --- | --- | --- | --- | --- | --- | --- | --- | --- | --- | --- | --- | --- |
| 102 | 1.2.1.2.5.3 | **Validación del cliente** |  | 2d | 2020-02-11 A | 2020-02-12 A | 101 | 100% | 2011-06-01 | 2011-06-02 | 2d |  |
| 103 | 1.2.1.2.5.3.1 | Revisión de estrategía de comunicación y formación |  | 1d | 2020-02-11 A | 2020-02-11 A |  | 100% | 2011-06-01 | 2011-06-01 | 1d | start no earlier than 2020-02-06 |
| 104 | 1.2.1.2.5.3.2 | Adecuación de cambios |  | 1d | 2020-02-12 A | 2020-02-12 A | 103 | 100% | 2011-06-02 | 2011-06-02 | 1d |  |
| 105 | 1.2.1.2.5.4 | **Gestión de la configuración** |  | 1d | 2020-02-13 A | 2020-02-13 A | 104 | 100% | 2011-06-01 | 2011-06-01 | 1d |  |
| 106 | 1.2.1.2.5.4.1 | Realizar Control de Cambios a Baselines |  | 1d | 2020-02-13 A | 2020-02-13 A |  | 100% | 2011-06-01 | 2011-06-01 | 1d | start no earlier than 2020-02-07 |
| 107 | 1.2.1.3 | **Desarrollo** |  | 5d | 2020-02-13 A | 2020-02-19 A |  | 100% | 2011-06-01 | 2011-06-01 | 1d |  |
| 108 | 1.2.1.3.1 | **Iteración 1** |  | 2d | 2020-02-13 A | 2020-02-14 A |  | 100% | 2011-06-01 | 2011-06-01 | 1d |  |
| 109 | 1.2.1.3.1.1 | Planificación de Formación | milestone | 0d | 2020-02-13 A | 2020-02-13 A |  | 100% | 2011-06-01 | 2011-06-01 | 1d | start no earlier than 2020-02-03 |
| 110 | 1.2.1.3.1.2 | Codigo Fuente 1 |  | 2d | 2020-02-13 A | 2020-02-14 A | 109 | 100% | 2011-06-01 | 2011-06-01 | 1d |  |
| 111 | 1.2.1.3.1.3 | Pruebas internas | milestone | 0d | 2020-02-14 A | 2020-02-14 A | 110 | 100% |  |  |  |  |
| 112 | 1.2.1.3.1.4 | Informe de pruebas internas | milestone | 0d | 2020-02-14 A | 2020-02-14 A | 111 | 100% |  |  |  |  |
| 113 | 1.2.1.3.2 | **Iteración 2** |  | 2d | 2020-02-17 A | 2020-02-18 A |  | 100% | 2011-06-01 | 2011-06-01 | 1d |  |
| 114 | 1.2.1.3.2.1 | Verificación de la planificación de formación y comunicación | milestone | 0d | 2020-02-18 A | 2020-02-18 A | 112 | 100% | 2011-06-01 | 2011-06-01 | 1d | start no earlier than 2020-02-18 |
| 115 | 1.2.1.3.2.2 | Adecuación de Cambios |  | 1d | 2020-02-17 A | 2020-02-17 A | 110 | 100% | 2011-06-01 | 2011-06-01 | 1d |  |
| 116 | 1.2.1.3.2.3 | Casos de Prueba | milestone | 0d | 2020-02-17 A | 2020-02-17 A | 115 | 100% | 2011-06-01 | 2011-06-01 | 1d |  |
| 117 | 1.2.1.3.3 | **Iteración 3** |  | 2d | 2020-02-18 A | 2020-02-19 A |  | 100% | 2011-06-01 | 2011-06-01 | 1d |  |
| 118 | 1.2.1.3.3.1 | Solución en ambiente de Pruebas |  | 1d | 2020-02-18 A | 2020-02-18 A | 116 | 100% | 2011-06-01 | 2011-06-01 | 1d |  |
| 119 | 1.2.1.3.3.2 | Pruebas externas |  | 1d | 2020-02-19 A | 2020-02-19 A | 116 | 100% | 2011-06-01 | 2011-06-01 | 1d | start no earlier than 2020-02-19 |
| 120 | 1.2.1.3.3.3 | Informe de pruebas externas | milestone | 0d | 2020-02-19 A | 2020-02-19 A | 116 | 100% |  |  |  | finish no earlier than 2020-02-19 |
| 121 | 1.2.1.3.3.4 | Validación de Usuario | milestone | 0d | 2020-02-19 A | 2020-02-19 A | 116 | 100% | 2011-06-01 | 2011-06-01 | 1d | start no earlier than 2020-02-19 |
| 122 | 1.2.1.3.3.5 | Aceptación | milestone | 0d | 2020-02-19 A | 2020-02-19 A | 121 | 100% | 2011-06-01 | 2011-06-01 | 1d |  |
| 123 | 1.2.1.4 | **Implementación** |  | 0d | 2020-02-19 A | 2020-02-19 A | 107 | 100% | 2011-06-02 | 2011-06-03 | 2d |  |
| 124 | 1.2.1.4.1 | **Iteración 1** |  | 0d | 2020-02-19 A | 2020-02-19 A |  | 100% | 2011-06-02 | 2011-06-03 | 2d |  |
| 125 | 1.2.1.4.1.1 | Guía de instalación | milestone | 0d | 2020-02-19 A | 2020-02-19 A |  | 100% |  |  |  | finish no earlier than 2020-02-19 |
| 126 | 1.2.1.4.1.2 | Manual de Usuario | milestone | 0d | 2020-02-19 A | 2020-02-19 A |  | 100% |  |  |  |  |
| 127 | 1.2.1.4.1.3 | Entrega de Software Cachimbo a Crack | milestone | 0d | 2020-02-19 A | 2020-02-19 A |  | 100% | 2011-06-02 | 2011-06-02 | 1d |  |
| 128 | 1.2.1.4.1.4 | Relatorio de Proyecto | milestone | 0d | 2020-02-19 A | 2020-02-19 A | 127 | 100% | 2011-06-03 | 2011-06-03 | 1d |  |
